# Gantt Proyecto de Plaificacion v1.0

Schedule from MS Project, 2016-07-07 to 2016-12-02, A marks actual dates.

## Calendars

- MD - 2015/2016: Mon-Fri 07:45-12:30, 13:15-17:00; Sat-Sun off. Exceptions (off unless hours are given): 2015-05-01 to 2024-05-01 (Día del trabajo, recurring), 2015-05-21 to 2024-05-21 (Glorias Navales, recurring), 2015-06-27 to 2024-06-27 (San Pedro y San Pablo, recurring), 2015-07-16 to 2024-07-16 (Solemnidad de la virgen del Carmen, recurring), 2015-08-15 to 2024-08-15 (Asuncion de la Virgen, recurring), 2015-09-18 to 2024-09-18 (Fiestas Patrias, recurring), 2015-09-19 to 2024-09-19 (Glorias Del Ejercito, recurring), 2015-10-12 to 2024-10-12 (Día de Descubrimiento de 2 Mundos, recurring), 2015-10-31 to 2024-10-31 (Día de las Iglesias Evangelicas y Protestantes, recurring), 2015-11-01 to 2024-11-01 (Día de Todos Los Santos, recurring), 2015-12-08 to 2024-12-08 (Día de la inmaculada Concepción, recurring), 2015-12-25 to 2024-12-25 (Navidad, recurring), 2016-01-01 to 2025-01-01 (Año Nuevo, recurring).

## Resources

| Resource |
| --- |
| Eduado Pino |
| Gabriel Medina |
| Hernan Cares |
| Claudio Alvarez |
| Ilic Alarcon |
| Carlos Belmar |
| Oscar Torres |
| Victor Acevedo |
| Francisco Vargas |
| Francisco Gomez |
| Cesar Toro |
| Sergio Soto |
| Luis Godoy |
| Juan Carlos Toro |
| Aldo Recabal |
| Danilo San martin |
| Diego Quezada |
| Daniel Gutierrez |
| Alonso Silva |
| Marcelo vargas |
| Hector Adriazola |
| Jendri Calderon |
| Daniel Osorio |

## Schedule

| ID | WBS | Task | Duration | Start | Finish | Predecessors | Complete | Remaining | Total slack | Free slack | Constraint | Work | Text3 |
| --- | --- | --- | --- | --- | --- | --- | --- | --- | --- | --- | --- | --- | --- |
| 1 | 1 | Reunion Introduccion Antofagasta | 1h | 2016-07-11 A | 2016-07-11 A |  | 100% |  |  |  | start no earlier than 2016-07-11 |  |  |
| 2 | 2 | Reunion Avances N°2 | 30min | 2016-07-15 A | 2016-07-15 A |  | 100% |  |  |  | start no earlier than 2016-07-15 |  |  |
| 3 | 3 | Definiciones Alcances y Compromisos | 1d? | 2016-07-07 A | 2016-07-07 |  | 90% | 0.1d? | 107.25d |  |  |  |  |
| 4 | 4 | **Definicion Capacidades de Recursos** | 8.16d? | 2016-07-11 A | 2016-07-20 |  | 86% | 1.11d? | 14.11d |  |  |  |  |
| 5 | 4.1 | Recepcion Capacidades Trabajadores CCP | 4.25d | 2016-07-11 A | 2016-07-14 A |  | 100% |  |  |  | start no earlier than 2016-07-11 |  | Manuel Morales |
| 6 | 4.2 | Recepcion Capacidades Trabajadores Stgo | 4.19d | 2016-07-11 A | 2016-07-14 A |  | 100% |  |  |  | finish no earlier than 2016-07-14 |  |  |
| 7 | 4.3 | Recepcion Capacidades Trabajadores Afta | 4d | 2016-07-11 A | 2016-07-15 | 1 | 90% | 0.4d | 1.84d | 0d | start no earlier than 2016-07-11 |  | Pablo Carrasco |
| 8 | 4.4 | Analisis de Capacidades Trabajadores | 2.63d? | 2016-07-15 A | 2016-07-19 | 7, 6, 5 | 70% | 0.79d? | 14.11d | 0d | start no earlier than 2016-07-13 |  |  |
| 9 | 4.5 | Pre definicion de Centros de Trabajo | 1d? | 2016-07-19 | 2016-07-20 | 8 |  |  | 14.11d | 13.71d |  |  |  |
| 10 | 5 | **Definicion de Maestros de Reparacion** | 24d? | 2016-07-07 A | 2016-08-08 |  | 3% | 23.21d? | 84.25d |  |  | 816h |  |
| 11 | 5.1 | **Definicion y Ordenamiento de Modelos de Componente** | 3d? | 2016-07-07 A | 2016-07-11 |  | 27% | 2.2d? | 0.4d |  |  |  |  |
| 12 | 5.1.1 | Estadistica Rotacion de Componentes | 2d? | 2016-07-07 A | 2016-07-08 |  | 40% | 1.2d? | 0.4d | 0d | start no earlier than 2016-07-07 |  |  |
| 13 | 5.1.2 | Definicion de componentes Muestra Por Area | 1d? | 2016-07-08 | 2016-07-11 | 12 |  |  | 0.4d | 0d |  |  |  |
| 14 | 5.2 | **Diseño Listado de Tareas** | 6d? | 2016-07-11 A | 2016-07-19 |  | 35% | 3.9d? | 99.25d |  |  |  |  |
| 15 | 5.2.1 | Listado Inicial de Tareas - Reductores Paralelos | 1d? | 2016-07-11 A | 2016-07-12 | 13 | 40% | 0.6d? | 104.25d |  |  |  | Aldo Recabal |
| 16 | 5.2.2 | Listado Inicial de Tareas - Reductores Planetarios | 1d? | 2016-07-12 A | 2016-07-13 A | 15 | 100% |  |  |  |  |  | Aldo Recabal |
| 17 | 5.2.3 | Listado Inicial de Tareas - Transmisiones | 1d? | 2016-07-13 A | 2016-07-14 A | 16 | 100% |  |  |  |  |  | Aldo Recabal |
| 18 | 5.2.4 | Listado Inicial de Tareas - Cilindros | 1d? | 2016-07-11 A | 2016-07-12 | 13 | 60% | 0.4d? | 2.5d | 2d |  |  | Diego Quezada |
| 19 | 5.2.5 | Listado Inicial de Tareas - Bombas | 1d? | 2016-07-11 A | 2016-07-12 | 13 | 40% | 0.6d? | 2.5d | 2d |  |  | Daniel Gutierrez |
| 20 | 5.2.6 | Listado Inicial de Tareas - Compresores | 1d? | 2016-07-11 A | 2016-07-12 A | 13 | 100% |  |  |  |  |  |  |
| 21 | 5.2.7 | Listado Inicial de Tareas - Motores | 1d? | 2016-07-11 | 2016-07-12 | 13 |  |  | 2.5d | 2d |  |  |  |
| 22 | 5.2.8 | Listado Inicial de Tareas - Torno | 1d? | 2016-07-11 | 2016-07-12 | 13 |  |  | 2.5d | 2d |  |  |  |
| 23 | 5.2.9 | Listado Inicial de Tareas - Soldadura | 1d? | 2016-07-11 | 2016-07-12 | 13 |  |  | 2.5d | 2d |  |  |  |
| 24 | 5.2.10 | Analisis y consolidacion tipos de Tareas | 1d? | 2016-07-14 | 2016-07-15 | 23, 22, 21, 19, 18, 17, 20 |  |  | 0.5d | 0d |  |  |  |

| ID | WBS | Task | Duration | Start | Finish | Predecessors | Complete | Remaining | Total slack | Free slack | Resources | Work |
| --- | --- | --- | --- | --- | --- | --- | --- | --- | --- | --- | --- | --- |
| 25 | 5.2.11 | **Definicion Tipos de Tareas** | 2d? | 2016-07-15 A | 2016-07-19 |  | 13% | 1.75d? | 14.4d |  |  |  |
| 26 | 5.2.11.1 | analisis tipo tareas - AFTA | 1d? | 2016-07-15 A | 2016-07-18 | 24 | 50% | 0.5d? | 14.4d | 0d |  |  |
| 27 | 5.2.11.2 | analisis tipo tareas - CCP | 1d? | 2016-07-15 | 2016-07-18 | 24 |  |  | 14.4d | 0d |  |  |
| 28 | 5.2.11.3 | analisis tipo tareas - STGO | 1d? | 2016-07-15 | 2016-07-18 | 24 |  |  | 14.4d | 0d |  |  |
| 29 | 5.2.11.4 | Consolidacion listado Tipos de Tareas | 1d? | 2016-07-18 | 2016-07-19 | 28, 27, 26 |  |  | 14.4d | 14d |  |  |
| 30 | 5.3 | **Diseño Listado de Repuestos** | 20d | 2016-07-11 | 2016-08-05 |  |  |  | 0.4d |  |  | 816h |
| 31 | 5.3.1 | Listado Inicial de Repuestos - Reductores Paralelos | 17d | 2016-07-11 | 2016-08-02 | 13 |  |  | 0.4d | 0d | Alonso Silva | 136h |
| 32 | 5.3.2 | Listado Inicial de Repuestos - Reductores Planetarios | 17d | 2016-07-11 | 2016-08-02 | 13 |  |  | 0.4d | 0d | Marcelo vargas | 136h |
| 33 | 5.3.3 | Listado Inicial de Repuestos - Transmisiones | 17d | 2016-07-11 | 2016-08-02 | 13 |  |  | 0.4d | 0d | Hector Adriazola | 136h |
| 34 | 5.3.4 | Listado Inicial de Repuestos - Cilindros | 17d | 2016-07-11 | 2016-08-02 | 13 |  |  | 0.4d | 0d | Jendri Calderon | 136h |
| 35 | 5.3.5 | Listado Inicial de Repuestos - Bombas | 17d | 2016-07-11 | 2016-08-02 | 13 |  |  | 0.4d | 0d |  |  |
| 36 | 5.3.6 | Listado Inicial de Repuestos - Compresores | 17d | 2016-07-11 | 2016-08-02 | 13 |  |  | 0.4d | 0d | Daniel Osorio | 136h |
| 37 | 5.3.7 | Listado Inicial de Repuestos - Motores | 17d | 2016-07-11 | 2016-08-02 | 13 |  |  | 0.4d | 0d | Juan Carlos Toro | 136h |
| 38 | 5.3.8 | Listado Inicial de Repuestos - Torno | 17d | 2016-07-11 | 2016-08-02 | 13 |  |  | 0.4d | 0d |  |  |
| 39 | 5.3.9 | Listado Inicial de Repuestos - Soldadura | 17d | 2016-07-11 | 2016-08-02 | 13 |  |  | 0.4d | 0d |  |  |
| 40 | 5.3.10 | Analisis y consolidacion tipos de Repuestos y Manuales de Parte | 3d | 2016-08-02 | 2016-08-05 | 31, 32, 33, 34, 35, 36, 37, 38, 39 |  |  | 0.4d | 0d |  |  |
| 41 | 5.4 | Diseño Tipos de Reparacion | 1d? | 2016-08-05 | 2016-08-08 | 40, 29 |  |  | 0.4d | 0d |  |  |
| 42 | 6 | **Centros De Trabajo** | 1d? | 2016-08-08 A | 2016-08-09 |  | 40% | 0.6d? | 0.1d |  |  |  |
| 43 | 6.1 | Revision estructura Centros de Trabajo | 1d? | 2016-08-08 A | 2016-08-09 | 9, 41 | 40% | 0.6d? | 0.1d | 0d |  |  |
| 44 | 7 | Revision y Re diseño Hojas de Ruta | 1d? | 2016-08-09 A | 2016-08-10 | 43 | 10% | 0.9d? | 76.25d | 0d |  |  |
| 45 | 8 | Diseño Detalle de Evaluacion | 1d? | 2016-08-10 | 2016-08-11 | 44 |  |  | 76.25d | 0d |  |  |
| 46 | 9 | Revision y Rediseño Detalle de Reparacion | 1d? | 2016-08-11 | 2016-08-12 | 45 |  |  | 76.25d | 0d |  |  |
| 47 | 10 | **Recepcion de Componentes** | 32d? | 2016-07-07 | 2016-08-19 |  |  |  | 76.25d |  |  |  |
| 48 | 10.1 | Revision Tipos de Componente | 1d? | 2016-08-12 | 2016-08-16 | 46 |  |  | 76.25d | 0d |  |  |
| 49 | 10.2 | Diseño de Pre Recepcion | 1d? | 2016-08-16 | 2016-08-17 | 48 |  |  | 76.25d | 0d |  |  |
| 50 | 10.3 | Analisis de Agendamientos | 1d? | 2016-08-17 | 2016-08-18 | 49 |  |  | 76.25d | 0d |  |  |
| 51 | 10.4 | Revisiones Con Sucursales | 1d? | 2016-08-18 | 2016-08-19 | 50 |  |  | 76.25d |  |  |  |

| ID | WBS | Task | Duration | Start | Finish | Predecessors | Complete | Remaining | Total slack | Free slack | Constraint |
| --- | --- | --- | --- | --- | --- | --- | --- | --- | --- | --- | --- |
| 52 | 10.5 | **Revision Y Modificacion Recepcion de Componentes** | 1d? | 2016-07-07 | 2016-07-07 |  |  |  | 107.25d |  |  |
| 53 | 10.5.1 | Revision Criterios de Recepcion | 1d? | 2016-07-07 | 2016-07-07 |  |  |  | 107.25d |  |  |
| 54 | 10.5.2 | Diseño de Checklist de Recepcion | 1d? | 2016-07-07 | 2016-07-07 |  |  |  | 107.25d |  |  |
| 55 | 10.5.3 | Analisis de pantalla de Recepcion | 1d? | 2016-07-07 | 2016-07-07 |  |  |  | 107.25d |  |  |
| 56 | 11 | **Revision Proceso de Compras** | 2d? | 2016-07-07 | 2016-07-08 |  |  |  | 106.25d |  |  |
| 57 | 11.1 | Levantamiento de Requerimientos Adquisiciones | 1d? | 2016-07-07 | 2016-07-07 |  |  |  | 106.25d | 0d |  |
| 58 | 11.2 | Levantamiento Requerimientos Stgo | 1d? | 2016-07-07 | 2016-07-07 |  |  |  | 106.25d | 0d |  |
| 59 | 11.3 | Levantamiento Requerimientos Afta | 1d? | 2016-07-07 | 2016-07-07 |  |  |  | 106.25d | 0d |  |
| 60 | 11.4 | Levantamiento Requerimientos CCP | 1d? | 2016-07-07 | 2016-07-07 |  |  |  | 106.25d | 0d |  |
| 61 | 11.5 | Definiciones linea critica | 1d? | 2016-07-07 | 2016-07-08 | 57, 58, 59, 60 |  |  | 106.25d |  |  |
| 62 | 12 | Analisis sistemas de planificacion otras Empresas | 1d? | 2016-07-29 | 2016-07-29 |  |  |  | 90.25d |  | start no earlier than 2016-07-29 |
| 63 | 13 | **implantacion Hojas de Ruta** | 10d | 2016-07-07 A | 2016-07-20 |  | 3% | 9.75d | 98.25d |  |  |
| 64 | 13.1 | **implementacion Areas** | 10d | 2016-07-07 A | 2016-07-20 |  | 3% | 9.75d | 98.25d |  |  |
| 65 | 13.1.1 | Transmisiones | 2w | 2016-07-07 A | 2016-07-20 |  | 20% | 1.6w | 98.25d |  |  |
| 66 | 13.1.2 | Reductores | 2w | 2016-07-07 | 2016-07-20 |  |  |  | 98.25d |  |  |
| 67 | 13.1.3 | Compresores | 2w | 2016-07-07 | 2016-07-20 |  |  |  | 98.25d |  |  |
| 68 | 13.1.4 | Bombas | 2w | 2016-07-07 | 2016-07-20 |  |  |  | 98.25d |  |  |
| 69 | 13.1.5 | Equipos y Agmin | 2w | 2016-07-07 | 2016-07-20 |  |  |  | 98.25d |  |  |
| 70 | 13.1.6 | Cilindros | 2w | 2016-07-07 | 2016-07-20 |  |  |  | 98.25d |  |  |
| 71 | 13.1.7 | Fabricacion y Recuperacion | 2w | 2016-07-07 | 2016-07-20 |  |  |  | 98.25d |  |  |
| 72 | 13.1.8 | motores | 2w | 2016-07-07 | 2016-07-20 |  |  |  | 98.25d |  |  |
| 73 | 14 | **requerimiento de especificaciones Tecnicas** | 17.38d | 2016-07-29 A | 2016-08-23 |  | 3% | 16.89d | 73.88d |  |  |
| 74 | 14.1 | Capacidades Sistema Comercial | 2w | 2016-08-04 | 2016-08-18 |  |  |  | 73.88d | 0d | start no earlier than 2016-08-04 |
| 75 | 14.2 | Requerimientos mejoras | 2w | 2016-08-04 A | 2016-08-18 |  | 10% | 1.8w | 73.88d | 0d | start no earlier than 2016-08-04 |

| ID | WBS | Task | Duration | Start | Finish | Predecessors | Total slack | Free slack | Constraint |
| --- | --- | --- | --- | --- | --- | --- | --- | --- | --- |
| 76 | 14.3 | **Analisis software externos** | 13d | 2016-07-29 | 2016-08-17 |  | 75.12d |  |  |
| 77 | 14.3.1 | Revision proveedores | 4d | 2016-07-29 | 2016-08-03 |  | 75.12d | 0d | start no earlier than 2016-07-29 |
| 78 | 14.3.2 | envío de requerimientos | 1d | 2016-08-03 | 2016-08-04 | 77 | 75.12d | 0d |  |
| 79 | 14.3.3 | recepcion de propuestas | 5d | 2016-08-04 | 2016-08-11 | 78 | 75.12d | 0d |  |
| 80 | 14.3.4 | analisis de propuestas | 3d | 2016-08-11 | 2016-08-17 | 79 | 75.12d | 1.25d |  |
| 81 | 14.4 | Analisis de alternativas | 3d | 2016-08-18 | 2016-08-23 | 74, 75, 80 | 73.88d | 0d |  |
| 82 | 14.5 | presentacion de alternativas | 1h | 2016-08-23 | 2016-08-23 | 81 | 73.88d |  |  |
| 83 | 15 | **Informe de Requerimiento y Propuesta de Solucion** | 87d | 2016-08-04 | 2016-12-02 |  | 0d |  |  |
| 84 | 15.1 | Recepcion de componentes | 3d | 2016-08-04 | 2016-08-08 |  | 0d |  | start no earlier than 2016-08-04 |
| 85 | 15.2 | Evaluacion de Trabajo | 1mo | 2016-08-08 | 2016-09-05 | 84 | 0d |  |  |
| 86 | 15.3 | Presupuestos | 4d | 2016-09-05 | 2016-09-09 | 85 | 0d |  |  |
| 87 | 15.4 | Aprobacion de Presupuesto | 5d | 2016-09-09 | 2016-09-16 | 86 | 0d |  |  |
| 88 | 15.5 | Proceso Compras | 2w | 2016-09-16 | 2016-09-30 | 87 | 0d |  |  |
| 89 | 15.6 | Reparacion | 1mo | 2016-09-30 | 2016-10-28 | 88 | 0d |  |  |
| 90 | 15.7 | liberacion | 3d | 2016-10-28 | 2016-11-04 | 89 | 0d |  |  |
| 91 | 15.8 | despacho | 2d | 2016-11-04 | 2016-11-08 | 90 | 0d |  |  |
| 92 | 15.9 | Simulaciones | 1mo | 2016-11-08 | 2016-12-02 | 91 | 0d |  |  |
