# GFT 110 Armado

Schedule from MS Project, 2016-08-08 to 2016-08-25.

## Calendars

- MD - 2015/2016: Mon-Fri 07:45-12:30, 13:15-17:00; Sat-Sun off. Exceptions (off unless hours are given): 2015-05-01 to 2024-05-01 (Día del trabajo, recurring), 2015-05-21 to 2024-05-21 (Glorias Navales, recurring), 2015-06-27 to 2024-06-27 (San Pedro y San Pablo, recurring), 2015-07-16 to 2024-07-16 (Solemnidad de la virgen del Carmen, recurring), 2015-08-15 to 2024-08-15 (Asuncion de la Virgen, recurring), 2015-09-18 to 2024-09-18 (Fiestas Patrias, recurring), 2015-09-19 to 2024-09-19 (Glorias Del Ejercito, recurring), 2015-10-12 to 2024-10-12 (Día de Descubrimiento de 2 Mundos, recurring), 2015-10-31 to 2024-10-31 (Día de las Iglesias Evangelicas y Protestantes, recurring), 2015-11-01 to 2024-11-01 (Día de Todos Los Santos, recurring), 2015-12-08 to 2024-12-08 (Día de la inmaculada Concepción, recurring), 2015-12-25 to 2024-12-25 (Navidad, recurring), 2016-01-01 to 2025-01-01 (Año Nuevo, recurring).

## Schedule

| ID | WBS | Task | Duration | Start | Finish | Predecessors | Total slack | Free slack | Constraint |
| --- | --- | --- | --- | --- | --- | --- | --- | --- | --- |
| 1 | 1 | lavar ,controlar componentes | 2d | 2016-08-08 07:45 | 2016-08-09 16:00 |  | 1.31d | 0.12d | start no earlier than 2016-08-08 07:45 |
| 2 | 2 | **Etapa planetaria de primera reducción** | 1d | 2016-08-10 07:45 | 2016-08-10 16:30 |  | 1.19d |  |  |
| 3 | 2.1 | Montar rodamientos en piñones | 2h | 2016-08-10 07:45 | 2016-08-10 09:45 | 1 | 1.19d | 0d | start no earlier than 2016-08-10 07:45 |
| 4 | 2.2 | montar y fijar piñones en porta satélite | 4h | 2016-08-10 09:45 | 2016-08-10 14:30 | 3 | 1.19d | 0d |  |
| 5 | 2.3 | montar eje solar | 2h | 2016-08-10 14:30 | 2016-08-10 16:30 | 4 | 1.19d | 0d |  |
| 6 | 3 | **Etapa planetaria de segunda reducción** | 1.5d | 2016-08-10 16:30 | 2016-08-12 10:45 |  | 1.19d |  |  |
| 7 | 3.1 | Montar rodamientos en piñones | 6h | 2016-08-10 16:30 | 2016-08-11 14:00 | 5 | 1.19d | 0d |  |
| 8 | 3.2 | montar y fijar piñones en porta satélite | 4h | 2016-08-11 14:00 | 2016-08-12 08:45 | 7 | 1.19d | 0d |  |
| 9 | 3.3 | montar eje solar | 2h | 2016-08-12 08:45 | 2016-08-12 10:45 | 8 | 1.19d | 0d |  |
| 10 | 4 | **Etapa planetaria de salida** | 1.25d | 2016-08-12 10:45 | 2016-08-16 12:15 |  | 1.19d |  |  |
| 11 | 4.1 | Montar rodamientos en piñones | 6h | 2016-08-12 10:45 | 2016-08-16 08:15 | 9 | 1.19d | 0d |  |
| 12 | 4.2 | montar y fijar piñones en porta satélite | 4h | 2016-08-16 08:15 | 2016-08-16 12:15 | 11 | 1.19d | 0d |  |
| 13 | 5 | **eje central** | 1d | 2016-08-16 12:15 | 2016-08-17 11:45 |  | 1.19d |  |  |
| 14 | 5.1 | montar sellos | 2h | 2016-08-16 12:15 | 2016-08-16 15:00 | 12 | 1.19d | 0d |  |
| 15 | 5.2 | montar rodamientos cónicos | 4h | 2016-08-16 15:00 | 2016-08-17 09:45 | 14 | 1.19d | 0d |  |
| 16 | 5.3 | montar y torquear tuerca axial | 2h | 2016-08-17 09:45 | 2016-08-17 11:45 | 15 | 1.19d | 0d |  |
| 17 | 6 | **Conjunto** | 2d | 2016-08-17 11:45 | 2016-08-19 10:45 |  | 1.19d |  |  |
| 18 | 6.1 | montar cuerpo dentado | 2h | 2016-08-17 11:45 | 2016-08-17 14:30 | 16 | 1.19d | 0d |  |
| 19 | 6.2 | ensamblar líneas planetarias | 6h | 2016-08-17 14:30 | 2016-08-18 11:15 | 18 | 1.19d | 0d |  |
| 20 | 6.3 | montar tapa frontal | 4h | 2016-08-18 11:15 | 2016-08-18 16:00 | 19 | 1.19d | 0d |  |
| 21 | 6.4 | torquear pernos de amarre | 4h | 2016-08-18 16:00 | 2016-08-19 10:45 | 20 | 1.19d | 0d |  |
| 22 | 7 | **Sistema de frenos** | 1.62d | 2016-08-19 10:45 | 2016-08-22 16:00 |  | 1.19d |  |  |
| 23 | 7.1 | montar discos de freno | 2h | 2016-08-19 10:45 | 2016-08-19 13:30 | 21 | 1.19d | 0d |  |
| 24 | 7.2 | montar pistón | 1h | 2016-08-19 13:30 | 2016-08-19 14:30 | 23 | 1.19d | 0d |  |
| 25 | 7.3 | Montar resortes | 2h | 2016-08-19 14:30 | 2016-08-19 16:30 | 24 | 1.19d | 0d |  |
| 26 | 7.4 | montar sellos | 4h | 2016-08-19 16:30 | 2016-08-22 11:15 | 25 | 1.19d | 0d |  |
| 27 | 7.5 | montar sistema de freno en reductor | 2h | 2016-08-22 11:15 | 2016-08-22 14:00 | 26 | 1.19d | 0d |  |
| 28 | 7.6 | realizar prueba de presión al sistema de frenos | 2h | 2016-08-22 14:00 | 2016-08-22 16:00 | 27 | 1.19d |  |  |

| ID | WBS | Task | Duration | Start | Finish | Predecessors | Total slack | Constraint |
| --- | --- | --- | --- | --- | --- | --- | --- | --- |
| 29 | 8 | **Etapa de prueba** | 1.88d | 2016-08-24 07:45 | 2016-08-25 15:00 |  | 0d |  |
| 30 | 8.1 | Posicionar el componente | 3h | 2016-08-24 07:45 | 2016-08-24 10:45 | 28 | 0d | start no earlier than 2016-08-24 07:45 |
| 31 | 8.2 | Preparar dispositivos de prueba | 2h | 2016-08-24 10:45 | 2016-08-24 13:30 | 30 | 0d |  |
| 32 | 8.3 | Montar elementos de prueba | 2h | 2016-08-24 13:30 | 2016-08-24 15:30 | 31 | 0d |  |
| 33 | 8.4 | Aporta lubricante | 1h | 2016-08-24 15:30 | 2016-08-24 16:30 | 32 | 0d |  |
| 34 | 8.5 | Realizar prueba | 4h | 2016-08-24 16:30 | 2016-08-25 11:15 | 33 | 0d |  |
| 35 | 8.6 | Drenar lubricante de prueba | 1h | 2016-08-25 11:15 | 2016-08-25 12:15 | 34 | 0d |  |
| 36 | 8.7 | Desmontar elementos de prueba | 2h | 2016-08-25 12:15 | 2016-08-25 15:00 | 35 | 0d |  |
| 37 | 9 | **Despacho** | 0.25d | 2016-08-25 15:00 | 2016-08-25 17:00 |  | 0d |  |
| 38 | 9.1 | Pintar ,embalar componente para despacho | 2h | 2016-08-25 15:00 | 2016-08-25 17:00 | 36 | 0d |  |
