# REDUCTOR FALK 445A‐3‐CB

Schedule from MS Project, 2016-08-05 to 2016-08-09.

## Calendars

- MD - 2015/2016: Mon-Fri 07:45-12:30, 13:15-17:00; Sat-Sun off. Exceptions (off unless hours are given): 2015-05-01 to 2024-05-01 (Día del trabajo, recurring), 2015-05-21 to 2024-05-21 (Glorias Navales, recurring), 2015-06-27 to 2024-06-27 (San Pedro y San Pablo, recurring), 2015-07-16 to 2024-07-16 (Solemnidad de la virgen del Carmen, recurring), 2015-08-15 to 2024-08-15 (Asuncion de la Virgen, recurring), 2015-09-18 to 2024-09-18 (Fiestas Patrias, recurring), 2015-09-19 to 2024-09-19 (Glorias Del Ejercito, recurring), 2015-10-12 to 2024-10-12 (Día de Descubrimiento de 2 Mundos, recurring), 2015-10-31 to 2024-10-31 (Día de las Iglesias Evangelicas y Protestantes, recurring), 2015-11-01 to 2024-11-01 (Día de Todos Los Santos, recurring), 2015-12-08 to 2024-12-08 (Día de la inmaculada Concepción, recurring), 2015-12-25 to 2024-12-25 (Navidad, recurring), 2016-01-01 to 2025-01-01 (Año Nuevo, recurring).

## Schedule

| ID | WBS | Task | Duration | Start | Finish | Total slack |
| --- | --- | --- | --- | --- | --- | --- |
| 1 | 1 | **Evaluacion** | 3d | 2016-08-05 07:45 | 2016-08-09 15:30 | 0d |
| 2 | 1.1 | INSPECCION VISUAL DE REDUCTOR | 10min | 2016-08-05 07:45 | 2016-08-05 07:55 | 0.98d |
| 3 | 1.2 | Desarme | 1d | 2016-08-05 07:45 | 2016-08-05 16:30 | 2d |
| 4 | 1.3 | Desmontaje de Rodamientos | 1d | 2016-08-05 07:45 | 2016-08-05 16:30 | 2d |
| 5 | 1.4 | Limpieza Quimica de componentes | 4h | 2016-08-05 07:45 | 2016-08-05 11:45 | 0.5d |
| 6 | 1.5 | Inspeccion de Carcaza | 4h | 2016-08-05 07:45 | 2016-08-05 11:45 | 0.5d |
| 7 | 1.6 | Evaluacion de Machones | 2h | 2016-08-05 07:45 | 2016-08-05 09:45 | 0.75d |
| 8 | 1.7 | **Evaluacion Eje Pïñon** | 0.12d | 2016-08-05 07:45 | 2016-08-05 08:45 | 2.88d |
| 9 | 1.7.1 | EVALUACION EJE PIÑON ENTRADA | 1h | 2016-08-05 07:45 | 2016-08-05 08:45 | 2.88d |
| 10 | 1.7.2 | EVALUACION EJE PIÑON 1° REDUCCION | 1h | 2016-08-05 07:45 | 2016-08-05 08:45 | 2.88d |
| 11 | 1.7.3 | EVALUACION EJE PIÑON 2° REDUCCION | 1h | 2016-08-05 07:45 | 2016-08-05 08:45 | 2.88d |
| 12 | 1.7.4 | EVALUACION EJE SALIDA | 1h | 2016-08-05 07:45 | 2016-08-05 08:45 | 2.88d |
| 13 | 1.8 | **EVALUACION DE CORONAS** | 0.12d | 2016-08-05 07:45 | 2016-08-05 08:45 | 2.88d |
| 14 | 1.8.1 | EVALUACION CORONA DE 1° REDUCCION | 1h | 2016-08-05 07:45 | 2016-08-05 08:45 | 2.88d |
| 15 | 1.8.2 | EVALUACION CORONA 2° REDUCCION | 1h | 2016-08-05 07:45 | 2016-08-05 08:45 | 2.88d |
| 16 | 1.8.3 | EVALUACION CORONA DE SALIDA | 1h | 2016-08-05 07:45 | 2016-08-05 08:45 | 2.88d |
| 17 | 1.9 | **CONTROL DE CARCASA** | 3d | 2016-08-05 07:45 | 2016-08-09 15:30 | 0d |
| 18 | 1.9.1 | REMOVER EMPAQUETADURA | 2h | 2016-08-05 07:45 | 2016-08-05 09:45 | 2.75d |
| 19 | 1.9.2 | INSPECCION DE ROSCAS DE CARCASA | 30min | 2016-08-05 07:45 | 2016-08-05 08:15 | 2.94d |
| 20 | 1.9.3 | ARMADO DE CARCASA | 1h | 2016-08-05 07:45 | 2016-08-05 08:45 | 2.88d |
| 21 | 1.9.4 | CONTROL DMENSIONAL ALOJAMIENTOS DE RODAMIENTOS | 1h | 2016-08-05 07:45 | 2016-08-05 08:45 | 2.88d |
| 22 | 1.9.5 | CONTROL DE ALINEACION Y CUADRATURA DE CAJA | 3h | 2016-08-05 07:45 | 2016-08-05 10:45 | 2.62d |
| 23 | 1.9.6 | CONTROL DE PARTICULAS MAGNETICAS SECAS (YUGO) | 3h | 2016-08-05 07:45 | 2016-08-05 10:45 | 2.62d |
| 24 | 1.9.7 | GRANALLADO DE CARCASA | 3d | 2016-08-05 07:45 | 2016-08-09 15:30 | 0d |

| ID | WBS | Task | Duration | Start | Finish | Total slack |
| --- | --- | --- | --- | --- | --- | --- |
| 25 | 1.10 | **CONTROL DE EJES** | 0.38d | 2016-08-05 07:45 | 2016-08-05 10:45 | 2.62d |
| 26 | 1.10.1 | CONTROL DE ALINEACION | 2h | 2016-08-05 07:45 | 2016-08-05 09:45 | 2.75d |
| 27 | 1.10.2 | CONROL DIMENCIONAL ALOJAMIENO DE RODAMIENTO | 3h | 2016-08-05 07:45 | 2016-08-05 10:45 | 2.62d |
| 28 | 1.11 | **CONTROL DE TINTAS PENETRANTES** | 1d | 2016-08-05 07:45 | 2016-08-05 16:30 | 2d |
| 29 | 1.11.1 | CONTROL DE EJE PIÑONES SOLO SI ES SUPERIOR A 500 mm DE Ø | 1d | 2016-08-05 07:45 | 2016-08-05 16:30 | 2d |
| 30 | 1.11.2 | CONTROL DE CORONAS SOLO SI ES SUPERIOR A 500 mm DE Ø | 1d | 2016-08-05 07:45 | 2016-08-05 16:30 | 2d |
| 31 | 1.12 | **CONTROL DE PARTICULAS MAGNETICAS (SUSPENCION HUMEDAS)** | 0.5d | 2016-08-05 07:45 | 2016-08-05 11:45 | 2.5d |
| 32 | 1.12.1 | CONTROL DE EJE PIÑONES SOLO SI ES INFERIOR A 500 mm DE Ø | 4h | 2016-08-05 07:45 | 2016-08-05 11:45 | 2.5d |
| 33 | 1.12.2 | CONTROL DE CORONAS SOLO SI ES INFERIOR A 500 mm DE Ø | 4h | 2016-08-05 07:45 | 2016-08-05 11:45 | 2.5d |
| 34 | 2 | Reparacion | 1d? | 2016-08-05 07:45 | 2016-08-05 16:30 | 2d |
