# Acople FLEXIBLE BC 41-5-50N-1 PC 8000

Schedule from MS Project, 2016-08-02 to 2016-08-02, 8.15 hours a day.

## Calendars

- MD - 2015/2016: Mon-Fri 07:45-12:30, 13:15-17:00; Sat-Sun off. Exceptions (off unless hours are given): 2015-05-01 to 2024-05-01 (Día del trabajo, recurring), 2015-05-21 to 2024-05-21 (Glorias Navales, recurring), 2015-06-27 to 2024-06-27 (San Pedro y San Pablo, recurring), 2015-07-16 to 2024-07-16 (Solemnidad de la virgen del Carmen, recurring), 2015-08-15 to 2024-08-15 (Asuncion de la Virgen, recurring), 2015-09-18 to 2024-09-18 (Fiestas Patrias, recurring), 2015-09-19 to 2024-09-19 (Glorias Del Ejercito, recurring), 2015-10-12 to 2024-10-12 (Día de Descubrimiento de 2 Mundos, recurring), 2015-10-31 to 2024-10-31 (Día de las Iglesias Evangelicas y Protestantes, recurring), 2015-11-01 to 2024-11-01 (Día de Todos Los Santos, recurring), 2015-12-08 to 2024-12-08 (Día de la inmaculada Concepción, recurring), 2015-12-25 to 2024-12-25 (Navidad, recurring), 2016-01-01 to 2025-01-01 (Año Nuevo, recurring).

## Schedule

| ID | WBS | Task | Duration | Start | Finish | Predecessors | Total slack |
| --- | --- | --- | --- | --- | --- | --- | --- |
| 1 | 1 | **Armado** | 0.34d | 2016-08-02 07:45 | 2016-08-02 10:30 |  | 0d |
| 2 | 1.1 | Instalar O'rings en Flange | 15min | 2016-08-02 07:45 | 2016-08-02 08:00 |  | 0d |
| 3 | 1.2 | Instalar Kit de Tension en Flange | 30min | 2016-08-02 08:00 | 2016-08-02 08:30 | 2 | 0d |
| 4 | 1.3 | Side Plate, instalar O'ring, cerrar y torquear pernos | 45min | 2016-08-02 08:30 | 2016-08-02 09:15 | 3 | 0d |
| 5 | 1.4 | Inner Star: Instalar o'rings, pernos, montar e instalar Ring | 30min | 2016-08-02 09:15 | 2016-08-02 09:45 | 4 | 0d |
| 6 | 1.5 | instalar Supporting Ring en Inner Star | 15min | 2016-08-02 09:45 | 2016-08-02 10:00 | 5 | 0d |
| 7 | 1.6 | Instalar Seal Ring en conjunto | 15min | 2016-08-02 10:00 | 2016-08-02 10:15 | 6 | 0d |
| 8 | 1.7 | Instalar Tapa y Torquear | 15min | 2016-08-02 10:15 | 2016-08-02 10:30 | 7 | 0d |
| 9 | 2 | **Embalaje** | 0.21d | 2016-08-02 10:30 | 2016-08-02 12:15 |  | 0d |
| 10 | 2.1 | Lavado Exterior | 15min | 2016-08-02 10:30 | 2016-08-02 10:45 | 8 | 0d |
| 11 | 2.2 | Pintura y Secado | 1h | 2016-08-02 10:45 | 2016-08-02 11:45 | 10 | 0d |
| 12 | 2.3 | Aplicar Grasa Protectora | 15min | 2016-08-02 11:45 | 2016-08-02 12:00 | 11 | 0d |
| 13 | 2.4 | Fabricacion Cajon | 1h | 2016-08-02 10:30 | 2016-08-02 11:30 | 8 | 0.06d |
| 14 | 2.5 | Embalar | 15min | 2016-08-02 12:00 | 2016-08-02 12:15 | 12, 13 | 0d |
