# Evaluacion y Armado Eje Dana 112/138

Schedule from MS Project, 2016-08-03 to 2016-09-12.

## Calendars

- MD - 2015/2016: Mon-Fri 07:45-12:30, 13:15-17:00; Sat-Sun off. Exceptions (off unless hours are given): 2015-05-01 to 2024-05-01 (Día del trabajo, recurring), 2015-05-21 to 2024-05-21 (Glorias Navales, recurring), 2015-06-27 to 2024-06-27 (San Pedro y San Pablo, recurring), 2015-07-16 to 2024-07-16 (Solemnidad de la virgen del Carmen, recurring), 2015-08-15 to 2024-08-15 (Asuncion de la Virgen, recurring), 2015-09-18 to 2024-09-18 (Fiestas Patrias, recurring), 2015-09-19 to 2024-09-19 (Glorias Del Ejercito, recurring), 2015-10-12 to 2024-10-12 (Día de Descubrimiento de 2 Mundos, recurring), 2015-10-31 to 2024-10-31 (Día de las Iglesias Evangelicas y Protestantes, recurring), 2015-11-01 to 2024-11-01 (Día de Todos Los Santos, recurring), 2015-12-08 to 2024-12-08 (Día de la inmaculada Concepción, recurring), 2015-12-25 to 2024-12-25 (Navidad, recurring), 2016-01-01 to 2025-01-01 (Año Nuevo, recurring).

## Schedule

| ID | WBS | Task | Type | Duration | Start | Finish | Predecessors | Total slack | Free slack | Constraint |
| --- | --- | --- | --- | --- | --- | --- | --- | --- | --- | --- |
| 1 | 1 | Limpieza exterior |  | 3h | 2016-08-03 07:45 | 2016-08-03 10:45 |  | 23.38d | 0d | start no earlier than 2016-08-03 07:45 |
| 2 | 2 | **Evaluacion** |  | 2.06d | 2016-08-03 10:45 | 2016-08-05 10:15 |  | 23.38d |  |  |
| 3 | 2.1 | Drenaje Aceite |  | 30min | 2016-08-03 10:45 | 2016-08-03 11:15 | 1 | 23.38d | 0d |  |
| 4 | 2.2 | Desarme |  | 8h | 2016-08-03 11:15 | 2016-08-04 10:45 | 3 | 23.38d | 0d |  |
| 5 | 2.3 | limpieza partes |  | 2h | 2016-08-04 10:45 | 2016-08-04 13:30 | 4 | 23.38d | 0d |  |
| 6 | 2.4 | Evaluacion de partes |  | 3h | 2016-08-04 13:30 | 2016-08-04 16:30 | 5 | 23.38d | 0d |  |
| 7 | 2.5 | Informe Tecnico |  | 3h | 2016-08-04 16:30 | 2016-08-05 10:15 | 6 | 23.38d | 0d |  |
| 8 | 2.6 | fin evaluacion | milestone | 0d | 2016-08-05 10:15 | 2016-08-05 10:15 | 7 | 23.38d | 0d |  |
| 9 | 3 | almacenaje piezas |  | 1h | 2016-08-05 10:15 | 2016-08-05 11:15 | 8 | 23.38d |  |  |
| 10 | 4 | Aceptacion de trabajo | milestone | 0d | 2016-09-07 11:15 | 2016-09-07 11:15 | 9 | 0d |  | start no earlier than 2016-09-07 11:15 |
| 11 | 5 | **Armado** |  | 3.14d | 2016-09-07 11:15 | 2016-09-12 10:50 |  | 0d |  |  |
| 12 | 5.1 | preparacion partes |  | 3h | 2016-09-07 11:15 | 2016-09-07 15:00 | 10 | 0d |  | start no earlier than 2016-08-01 07:45 |
| 13 | 5.2 | revision repuestos |  | 1h | 2016-09-07 15:00 | 2016-09-07 16:00 | 12 | 0d |  |  |
| 14 | 5.3 | armado |  | 12h | 2016-09-07 16:00 | 2016-09-09 10:15 | 13 | 0d |  | start no earlier than 2016-08-03 10:45 |
| 15 | 5.4 | **prueba** |  | 0.56d | 2016-09-09 10:15 | 2016-09-09 15:30 |  | 0d |  |  |
| 16 | 5.4.1 | montaje en banco y llenado de aceite |  | 1h | 2016-09-09 10:15 | 2016-09-09 11:15 | 14 | 0d |  |  |
| 17 | 5.4.2 | Prueba Funcionamiento |  | 2h | 2016-09-09 11:15 | 2016-09-09 14:00 | 16 | 0d |  |  |
| 18 | 5.4.3 | Drenaje Aceite y desmontar de banco |  | 30min | 2016-09-09 14:00 | 2016-09-09 14:30 | 17 | 0d |  |  |
| 19 | 5.4.4 | informe de prueba |  | 1h | 2016-09-09 14:30 | 2016-09-09 15:30 | 18 | 0d |  |  |
| 20 | 5.4.5 | fin prueba | milestone | 0d | 2016-09-09 15:30 | 2016-09-09 15:30 | 19 | 0d |  |  |
| 21 | 5.5 | **embalaje** |  | 1.01d | 2016-09-09 11:15 | 2016-09-12 10:50 |  | 0d |  |  |
| 22 | 5.5.1 | fabricación pallet |  | 1h | 2016-09-09 11:15 | 2016-09-09 12:15 | 16, 17 | 0.81d |  |  |
| 23 | 5.5.2 | Pintar Eje |  | 1h | 2016-09-09 15:30 | 2016-09-09 16:30 | 20 | 0d |  |  |
| 24 | 5.5.3 | secado de pintura |  | 3h | 2016-09-09 16:30 | 2016-09-12 10:15 | 23 | 0d |  |  |
| 25 | 5.5.4 | montar en pallet |  | 5min | 2016-09-12 10:15 | 2016-09-12 10:20 | 24, 22 | 0d |  |  |
| 26 | 5.5.5 | revisar tapones y tapas para despacho |  | 10min | 2016-09-12 10:20 | 2016-09-12 10:30 | 25 | 0d |  |  |
| 27 | 5.5.6 | instalar film de proteccion |  | 20min | 2016-09-12 10:30 | 2016-09-12 10:50 | 26 | 0d |  |  |
| 28 | 5.5.7 | fin embalaje | milestone | 0d | 2016-09-12 10:50 | 2016-09-12 10:50 | 27 | 0d |  |  |
