# Evaluacion y Armado R18000

Schedule from MS Project, 2016-07-27 to 2016-08-08.

## Calendars

- MD - 2015/2016: Mon-Fri 07:45-12:30, 13:15-17:00; Sat-Sun off. Exceptions (off unless hours are given): 2015-05-01 to 2024-05-01 (Día del trabajo, recurring), 2015-05-21 to 2024-05-21 (Glorias Navales, recurring), 2015-06-27 to 2024-06-27 (San Pedro y San Pablo, recurring), 2015-07-16 to 2024-07-16 (Solemnidad de la virgen del Carmen, recurring), 2015-08-15 to 2024-08-15 (Asuncion de la Virgen, recurring), 2015-09-18 to 2024-09-18 (Fiestas Patrias, recurring), 2015-09-19 to 2024-09-19 (Glorias Del Ejercito, recurring), 2015-10-12 to 2024-10-12 (Día de Descubrimiento de 2 Mundos, recurring), 2015-10-31 to 2024-10-31 (Día de las Iglesias Evangelicas y Protestantes, recurring), 2015-11-01 to 2024-11-01 (Día de Todos Los Santos, recurring), 2015-12-08 to 2024-12-08 (Día de la inmaculada Concepción, recurring), 2015-12-25 to 2024-12-25 (Navidad, recurring), 2016-01-01 to 2025-01-01 (Año Nuevo, recurring).

## Schedule

| ID | WBS | Task | Type | Duration | Start | Finish | Predecessors | Total slack |
| --- | --- | --- | --- | --- | --- | --- | --- | --- |
| 1 | 1 | **Evaluacion** |  | 2.97d | 2016-07-27 07:45 | 2016-07-29 15:15 |  | 0d |
| 2 | 1.1 | Limpieza exterior |  | 1h | 2016-07-27 07:45 | 2016-07-27 08:45 |  | 0d |
| 3 | 1.2 | Drenaje Aceite |  | 0.75h | 2016-07-27 08:45 | 2016-07-27 09:30 | 2 | 0d |
| 4 | 1.3 | Desarme |  | 8h | 2016-07-27 09:30 | 2016-07-28 09:00 | 3 | 0d |
| 5 | 1.4 | limpieza partes |  | 5h | 2016-07-28 09:00 | 2016-07-28 14:45 | 4 | 0d |
| 6 | 1.5 | Evaluacion de partes |  | 4h | 2016-07-28 14:45 | 2016-07-29 09:30 | 5 | 0d |
| 7 | 1.6 | Informe Tecnico |  | 4h | 2016-07-29 09:30 | 2016-07-29 14:15 | 6 | 0d |
| 8 | 1.7 | almacenaje piezas |  | 1h | 2016-07-29 14:15 | 2016-07-29 15:15 | 7 | 0d |
| 9 | 1.8 | fin evaluacion | milestone | 0d | 2016-07-29 15:15 | 2016-07-29 15:15 | 8 | 0d |
| 10 | 2 | **Armado** |  | 5.72d | 2016-07-29 15:15 | 2016-08-08 09:15 |  | 0d |
| 11 | 2.1 | preparacion partes |  | 2h | 2016-07-29 15:15 | 2016-08-01 08:00 | 9 | 0d |
| 12 | 2.2 | revision repuestos |  | 1h | 2016-08-01 08:00 | 2016-08-01 09:00 | 11 | 0d |
| 13 | 2.3 | armado |  | 22h | 2016-08-01 09:00 | 2016-08-03 14:45 | 12 | 0d |
| 14 | 2.4 | fin armado | milestone | 0d | 2016-08-03 14:45 | 2016-08-03 14:45 | 13 | 0d |
| 15 | 2.5 | **prueba** |  | 1.72d | 2016-08-03 14:45 | 2016-08-05 10:45 |  | 0d |
| 16 | 2.5.1 | montaje en banco |  | 1h | 2016-08-03 14:45 | 2016-08-03 15:45 | 14 | 0d |
| 17 | 2.5.2 | conexiónes hidraulicas |  | 0.5h | 2016-08-03 15:45 | 2016-08-03 16:15 | 16 | 0d |
| 18 | 2.5.3 | conexion de sensores |  | 0.5h | 2016-08-03 16:15 | 2016-08-03 16:45 | 17 | 0d |
| 19 | 2.5.4 | llenado de aceite |  | 1h | 2016-08-03 16:45 | 2016-08-04 08:30 | 18 | 0d |
| 20 | 2.5.5 | Prueba Funcionamiento |  | 4h | 2016-08-04 08:30 | 2016-08-04 12:30 | 19 | 0d |
| 21 | 2.5.6 | desconexion lineas |  | 0.5d | 2016-08-04 13:15 | 2016-08-05 08:00 | 20 | 0d |
| 22 | 2.5.7 | Drenaje Aceite |  | 0.75h | 2016-08-05 08:00 | 2016-08-05 08:45 | 21 | 0d |
| 23 | 2.5.8 | desmontar de banco |  | 1h | 2016-08-05 08:45 | 2016-08-05 09:45 | 22 | 0d |
| 24 | 2.5.9 | informe de prueba |  | 1h | 2016-08-05 09:45 | 2016-08-05 10:45 | 23 | 0d |
| 25 | 2.5.10 | fin prueba | milestone | 0d | 2016-08-05 10:45 | 2016-08-05 10:45 | 24 | 0d |

| ID | WBS | Task | Type | Duration | Start | Finish | Predecessors | Total slack |
| --- | --- | --- | --- | --- | --- | --- | --- | --- |
| 26 | 2.6 | **embalaje** |  | 1.72d | 2016-08-04 13:15 | 2016-08-08 09:15 |  | 0d |
| 27 | 2.6.1 | fabricación pallet |  | 2h | 2016-08-04 13:15 | 2016-08-04 15:15 | 20 | 1.34d |
| 28 | 2.6.2 | pintar transmision |  | 2h | 2016-08-05 10:45 | 2016-08-05 13:30 | 25 | 0d |
| 29 | 2.6.3 | secado de pintura |  | 4h | 2016-08-05 13:30 | 2016-08-08 08:15 | 28 | 0d |
| 30 | 2.6.4 | montar en pallet |  | 10min | 2016-08-08 08:15 | 2016-08-08 08:25 | 29, 27 | 0d |
| 31 | 2.6.5 | revisar tapones y tapas para despacho |  | 20min | 2016-08-08 08:25 | 2016-08-08 08:45 | 30 | 0d |
| 32 | 2.6.6 | instalar film de proteccion |  | 30min | 2016-08-08 08:45 | 2016-08-08 09:15 | 31 | 0d |
| 33 | 2.6.7 | fin embalaje | milestone | 0d | 2016-08-08 09:15 | 2016-08-08 09:15 | 32 | 0d |
